# PR-PI26-06 Hangar 3 Airbus Tablada

Schedule from ProjectLibre, 2026-09-01 to 2026-10-05.

## Calendars

- Standard: Mon-Fri 08:00-12:00, 13:00-17:00; Sat-Sun off.

## Resources

| Resource | Rate |
| --- | --- |
| No Asignado |  |
| Jefe de obra / Director de ejecucion | 35 |
| Coordinador de Seguridad y Salud | 30 |
| Electricista oficial de 1ª (x2) | 11 |
| Electricista oficial de 2ª (x4) | 4.5 |
| Tecnico de automatizacion / DALI | 25 |
| Tecnico de videovigilancia (x2) | 11 |
| Operario certificado altura (x2) | 10 |
| Tecnico de mediciones | 25 |
| Bandeja metalica perforada 200x60mm | 12.5 |
| Tubo corrugado M32 | 4.2 |
| Fijaciones y soportes | 2.5 |
| Bandeja 100x60mm | 12.5 |
| Tubo corrugado M25 | 4.2 |
| Abrazaderas | 1.5 |
| Tubo corrugado M20 | 4.2 |
| Caja de derivacion estanca Famatel 100x100mm | 3.5 |
| Caja de registro estanca 310x240mm | 8 |
| Interruptor magnetotermico 4P 50A Curva C 6kA | 88 |
| Interruptor diferencial 4P 63A 30mA Clase A-SI | 145 |
| Interruptor magnetotermico 2P 16A | 48 |
| Carril DIN | 3.5 |
| Caja IP65 | 95 |
| Diferencial 2P 25A 30mA | 98 |
| Caja superficie IP40 | 95 |
| Regleta bornas | 4 |
| Cable cobre RZ1-K (AS) 0,6/1kV 5G16mm2 CPR Cca | 42 |
| Cable cobre Top Cable RZ1-K (AS) 0,6/1kV 3G2,5mm2 | 3.2 |
| BUS DALI (DC 16V, 250mA) | 65 |
| Cable bus DALI 2x1,5mm2 | 1.8 |
| Acoplador SKYDANCE DA-P DT6 | 210 |
| Controlador Tridonic SceneDom | 890 |
| Gateway DALI-IP | 210 |
| Fuente alimentacion DALI 250mA | 95 |
| Driver DALI regulable 50W | 185 |
| Driver DALI regulable 100W | 85 |
| Conector Wago 221 | 10 |
| Detector movimiento DALI Helvar 312 | 85 |
| Sensor de zona 360 techo | 65 |
| Soporte superficie sensor | 1250 |
| Detector presencia techo DALI | 280 |
| Fotocelula exterior IP65 | 480 |
| SAI SLC-1000-TWIN PRO 1000VA/900W | 520 |
| Bateria externa 12V 9Ah | 25 |
| Rack 19" 6U | 650 |
| Camara Hikvision DS-2CD2143G2-I 4MP | 480 |
| Soporte pared articulado camara | 25 |
| Plataforma elevadora 22m | 38 |
| Camara Hikvision DS-2CD2T43G2-4I 4MP | 390 |
| Soporte techo camara | 25 |
| Camara domo Hikvision DS-2CD2143G2 | 390 |
| Soporte falso techo camara | 2.2 |
| Carteles videovigilancia LOPD | 5 |
| Cable UTP Cat6A LSZH | 2.2 |
| Canaleta 40x25mm | 4.2 |
| Conector RJ45 Cat6A | 3.5 |
| Switch DS-3E1518P-EI 16 puertos PoE+ | 3200 |
| Switch DS-3E1105P-EI/M V2 | 1850 |
| Rack mural 12U IP55 | 320 |
| Patch panel Cat6A 24p | 38 |
| Discos de 8TB RAID 5 | 280 |
| NVR Hikvision DS-9632NI-I8 32 canales | 2400 |
| Rack 19" 12U | 480 |
| Monitor 27" 4K | 650 |
| Teclado joystick IP | 210 |
| Software VMS licencia | 150 |
| Plataforma tijera electrica 27m | 650 |
| EPI anticaidas EN795 | 45 |
| STADIGO SLIM PRO 800 D P40 | 1500 |
| Soporte suspension regulable luminaria | 15 |
| Tornilleria inox M10 | 2 |
| Conector Quick-Connect IP66 | 3 |
| Tubo flexible M20 | 4.2 |
| Brida nylon | 0.2 |
| Philips 910505102856 BY580X campana LED | 320 |
| Soporte cadena acero inox campana | 15 |
| Escalera tijera 6m | 50 |
| PHILIPS ESSENTIAL TCBRLR46S/940 | 145 |
| Marco empotrar 600x600mm | 20 |
| 22822 - L 600 LED 19W 4000K | 112 |
| Soporte superficie IP44 | 10 |
| Brida nylon negra | 0.2 |
| Cinta senalizadora | 2 |
| Software DALI configurator |  |
| Tablet programacion | 150 |
| Luxometro Testo 540 | 180 |
| Multimetro Fluke 117 | 45 |
| Medidor aislamiento Megger MIT430 | 68 |
| Cartel LOPD homologado | 5 |

## Schedule

| ID | WBS | Task | Type | Duration | Start | Finish | Predecessors | Resources |
| --- | --- | --- | --- | --- | --- | --- | --- | --- |
| 1 | 0 | **Ejecucion del Proyecto - Hangar 3 Airbus Tablada** |  | 25d | 2026-09-01 | 2026-10-05 |  |  |
| 2 | 1 | **Fase 1. Instalacion electrica** |  | 14d | 2026-09-01 | 2026-09-18 |  |  |
| 3 | 2 | **Replanteo y trazado de canalizaciones** |  | 4d | 2026-09-01 | 2026-09-04 |  |  |
| 4 | 3 | Seccion central del hangar |  | 4d | 2026-09-01 | 2026-09-04 |  | Electricista oficial de 1ª (x2) |
| 5 | 4 | Almacen lateral |  | 3d | 2026-09-01 | 2026-09-03 |  | Electricista oficial de 2ª (x4) |
| 6 | 5 | Edificio de oficinas planta baja |  | 4d | 2026-09-01 | 2026-09-04 |  | Electricista oficial de 1ª (x2) |
| 7 | 6 | CGP - Cuadro General de Protecciones est. 088 |  | 5d | 2026-09-07 | 2026-09-11 | 3 | Electricista oficial de 1ª (x2); Jefe de obra / Director de ejecucion |
| 8 | 7 | CS1 - Cuadro Secundario oficinas y vestuarios |  | 5d | 2026-09-07 | 2026-09-11 | 3 | Electricista oficial de 1ª (x2); Electricista oficial de 2ª (x4) |
| 9 | 8 | CS2 - Cuadro Secundario sala 096 camaras y SAI |  | 5d | 2026-09-07 | 2026-09-11 | 3 | Electricista oficial de 1ª (x2) |
| 10 | 9 | Tendido de lineas de consumo |  | 5d | 2026-09-14 | 2026-09-18 | 7 | Electricista oficial de 1ª (x2); Electricista oficial de 2ª (x4) |
| 11 | 10 | HITO Instalacion electrica completada | milestone | 0d | 2026-09-18 | 2026-09-18 | 10 |  |
| 12 | 11 | **Fase 2. Control automatizado DALI** |  | 21d | 2026-09-07 | 2026-10-05 |  |  |
| 13 | 12 | Tendido bus DALI paralelo a canalizacion |  | 5d | 2026-09-07 | 2026-09-11 | 3 | Tecnico de automatizacion / DALI |
| 14 | 13 | Centralita DALI y controlador central |  | 5d | 2026-09-14 | 2026-09-18 | 7 | Electricista oficial de 1ª (x2); Tecnico de automatizacion / DALI |
| 15 | 14 | Drivers DALI y cableado de campo |  | 5d | 2026-09-21 | 2026-09-25 | 14 | Electricista oficial de 2ª (x4); Tecnico de automatizacion / DALI |
| 16 | 15 | Sensores presencia almacen zonificado |  | 4d | 2026-09-21 | 2026-09-24 | 14 | Tecnico de automatizacion / DALI |
| 17 | 16 | Sensores y fotocelulas oficinas y vestuarios |  | 4d | 2026-09-21 | 2026-09-24 | 14 | Tecnico de automatizacion / DALI |
| 18 | 17 | SAI sala 096 autonomia minima 2 horas |  | 6d | 2026-09-28 | 2026-10-05 | 15 | Electricista oficial de 1ª (x2) |
| 19 | 18 | HITO Hardware DALI completado | milestone | 0d | 2026-10-05 | 2026-10-05 | 18 |  |
| 20 | 19 | **Fase 3. Sistema de videovigilancia** |  | 14d | 2026-09-07 | 2026-09-24 |  |  |
| 21 | 20 | **Montaje camaras IP hangar almacen y oficinas** |  | 5d | 2026-09-07 | 2026-09-11 | 3 |  |
| 22 | 21 | Camaras seccion central altura 20m plataforma |  | 5d | 2026-09-07 | 2026-09-11 |  | Tecnico de videovigilancia (x2); Operario certificado altura (x2) |
| 23 | 22 | Camaras almacen lateral |  | 4d | 2026-09-07 | 2026-09-10 |  | Tecnico de videovigilancia (x2) |
| 24 | 23 | Camaras edificio de oficinas |  | 4d | 2026-09-07 | 2026-09-10 |  | Tecnico de videovigilancia (x2) |
| 25 | 24 | Tendido cableado IP PoE+ Cat6A |  | 4d | 2026-09-14 | 2026-09-17 | 22, 23, 24 | Tecnico de videovigilancia (x2) |
| 26 | 25 | Switches industriales y nodo core |  | 3d | 2026-09-18 | 2026-09-22 | 25 | Tecnico de videovigilancia (x2) |
| 27 | 26 | NVR y almacenamiento masivo sala 096 |  | 2d | 2026-09-23 | 2026-09-24 | 26 | Tecnico de videovigilancia (x2) |
| 28 | 27 | Monitores operador y configuracion red IP |  | 2d | 2026-09-23 | 2026-09-24 | 26 | Tecnico de videovigilancia (x2) |

Notes:
- 1: PR-PI26-06 Iluminacion automatizada y videovigilancia. Duracion total: 30 dias habiles. Inicio: 01/06/2026. Fin: 13/07/2026.
- 2: Instalacion de canalizaciones, cuadros electricos y tendido de lineas de consumo segun REBT
- 3: Bandeja metalica perforada 200x60mm; Tubo corrugado M25/M32; Fijaciones y soportes
- 4: Bandeja 200x60mm [120 m]; Tubo M32 [80 m]; Taco expansion M8 [200 u]
- 5: Bandeja 100x60mm [60 m]; Tubo M25 [40 m]; Abrazaderas [80 u]
- 6: Tubo corrugado M20 [90 m]; Caja de derivacion estanca Famatel 100x100mm [14 u]; Caja de registro estanca 310x240mm [6 u]
- 7: Interruptor magnetotermico 4P 50A Curva C 6kA; Interruptor diferencial 4P 63A 30mA Clase A-SI; Interruptor magnetotermico 2P 16A [12 u]; Carril DIN [3 m]; Caja IP65
- 8: Interruptor magnetotermico 2P 16A [6 u]; Diferencial 2P 25A 30mA [3 u]; Caja superficie IP40; Oficial electricista
- 9: Interruptor magnetotermico 2P 16A [4 u]; Diferencial 2P 25A 30mA [2 u]; Regleta bornas; Caja IP40; Oficial electricista
- 10: Cable cobre RZ1-K (AS) 0,6/1 kV 5G16 mm2 CPR Cca [73 m]; Cable cobre Top Cable RZ1-K (AS) 0,6/1 kV 3G2,5 mm2 [210 m]; Oficial electricista; Ayudante electricista
- 11: Revision final REBT; Acta de puesta en servicio
- 12: Instalacion del sistema de control DALI-2 con sensores, centralita y programacion horaria
- 13: BUS DALI (DC 16V, 250mA); Cable bus 2x1,5 mm2 [180 m]; Acoplador SKYDANCE DA-P DT6 [6 u]
- 14: Controlador tactil LD103B; Gateway DALI-IP; Fuente alimentacion DALI 250mA [2 u]; Oficial electricista
- 15: Driver DALI regulable 50W [36 u]; Driver DALI regulable 100W [12 u]; Conector Wago 221 [200 u]; Ayudante electricista
- 16: Detector movimiento DALI Helvar 312 [8 u]; Sensor de zona 360 techo [4 u]; Soporte superficie [12 u]
- 17: Detector presencia techo DALI [6 u]; Fotocelula exterior IP65 [2 u]; Cable sensor 2x0,5mm2 [40 m]
- 18: SAI SLC-1000-TWIN PRO 1000VA/900W; Bateria externa 12V 9Ah [4 u]; Rack 19" 6U; Oficial electricista
- 19: Verificacion direccionamiento DALI; Test de comunicacion bus
- 20: Instalacion sistema CCTV IP con grabacion continua conforme a LOPDGDD
- 21: Camara domo IP Hikvision HWI-D121H-M Full PoE IR30m [5 u]; Camara domo IP Hikvision HWI-D140H-M [4 u]; Carteles videovigilancia [14 u]; Ayudante montador
- 22: Camara Hikvision DS-2CD2143G2-I 4MP [6 u]; Soporte pared articulado [6 u]; Plataforma elevadora 22m
- 23: Camara Hikvision DS-2CD2T43G2-4I 4MP [4 u]; Soporte techo [4 u]; Caja de conexion IP66 [4 u]
- 24: Camara domo Hikvision DS-2CD2143G2 [3 u]; Soporte falso techo [3 u]; Oficial instalador redes
- 25: Cable UTP Cat6A LSZH [350 m]; Canaleta 40x25mm [60 m]; Conector RJ45 Cat6A [50 u]; Oficial instalador de redes y equipos de deteccion y seguridad
- 26: Switch DS-3E1518P-EI 16 puertos PoE+ [1 u]; Switch DS-3E1105P-EI/M V2 [2 u]; Rack mural 12U IP55; Patch panel Cat6A 24p
- 27: Discos de 8TB RAID 5 [4 u]; NVR Hikvision DS-9632NI-I8 32 canales; Rack 19" 12U
- 28: Monitor 27" 4K [2 u]; Teclado joystick IP; Software VMS licencia; Oficial instalador redes

| ID | WBS | Task | Type | Duration | Start | Finish | Predecessors | Resources |
| --- | --- | --- | --- | --- | --- | --- | --- | --- |
| 29 | 28 | **Fase 4. Instalacion de luminarias** |  | 12d | 2026-09-04 | 2026-09-21 |  |  |
| 30 | 29 | **Proyectores LED seccion central altura 25.7m** |  | 8d | 2026-09-07 | 2026-09-16 |  |  |
| 31 | 30 | Montaje plataforma elevadora mayor 27m |  | 2d | 2026-09-07 | 2026-09-08 | 3 | Operario certificado altura (x2) |
| 32 | 31 | Colocacion y fijacion de proyectores |  | 4d | 2026-09-09 | 2026-09-14 | 31 | Electricista oficial de 1ª (x2); Operario certificado altura (x2) |
| 33 | 32 | Conexionado electrico proyectores |  | 2d | 2026-09-15 | 2026-09-16 | 32 | Electricista oficial de 2ª (x4) |
| 34 | 33 | Campanas LED almacen lateral altura 12.75m |  | 4d | 2026-09-04 | 2026-09-09 | 5 | Electricista oficial de 1ª (x2); Electricista oficial de 2ª (x4) |
| 35 | 34 | Luminarias empotradas oficinas falso techo |  | 5d | 2026-09-07 | 2026-09-11 | 6 | Electricista oficial de 1ª (x2) |
| 36 | 35 | Luminarias superficie vestuarios y aseos |  | 5d | 2026-09-07 | 2026-09-11 | 6 | Electricista oficial de 1ª (x2) |
| 37 | 36 | Conexionado final a CGP y CS1 |  | 3d | 2026-09-17 | 2026-09-21 | 33, 34, 35, 36 | Electricista oficial de 1ª (x2); Electricista oficial de 2ª (x4) |
| 38 | 37 | **Fase 5. Puesta en marcha y pruebas** |  | 8d | 2026-09-21 | 2026-09-30 |  |  |
| 39 | 38 | Configuracion escenas DALI y grupos |  | 3d | 2026-09-21 | 2026-09-23 | 14 | Tecnico de automatizacion / DALI |
| 40 | 39 | Programacion control horario seccion central |  | 2d | 2026-09-24 | 2026-09-25 | 39 | Electricista oficial de 1ª (x2) |
| 41 | 40 | Calibracion sensores presencia y fotocelulas |  | 2d | 2026-09-24 | 2026-09-25 | 39 | Tecnico de automatizacion / DALI |
| 42 | 41 | Verificacion instalacion electrica REBT LOTO |  | 2d | 2026-09-21 | 2026-09-22 | 10 | Electricista oficial de 1ª (x2); Jefe de obra / Director de ejecucion |
| 43 | 42 | Medicion niveles iluminancia luxometro |  | 2d | 2026-09-22 | 2026-09-23 | 37 | Tecnico de mediciones |
| 44 | 43 | Configuracion retencion legal grabaciones LOPDGDD |  | 2d | 2026-09-25 | 2026-09-28 | 27 | Tecnico de videovigilancia (x2) |
| 45 | 44 | Periodo de prueba integral y correcciones |  | 2d | 2026-09-29 | 2026-09-30 | 40, 41, 42, 43, 44 | Electricista oficial de 1ª (x2); Tecnico de videovigilancia (x2) |
| 46 | 45 | HITO Entrega y recepcion provisional dia 30 | milestone | 0d | 2026-09-30 | 2026-09-30 | 45 |  |

Notes:
- 29: Montaje de luminarias en todas las zonas del hangar con plataforma elevadora
- 30: STADIGO SLIM PRO 800 D P40 [36 u]; Soporte suspension regulable [36 u]; Plataforma elevadora 27m; Oficial electricista
- 31: Plataforma tijera electrica 27m; Operario certificado altura; EPI anticaidas EN795
- 32: STADIGO SLIM PRO 800 D P40 [36 u]; Tornilleria inox M10 [144 u]; Nivel laser; Oficial electricista
- 33: Conector Quick-Connect IP66 [36 u]; Tubo flexible M20 [72 m]; Brida nylon [200 u]; Ayudante electricista
- 34: Philips 910505102856 BY580X [12 u]; Soporte cadena acero inox [12 u]; Escalera tijera 6m; Oficial electricista; Ayudante electricista
- 35: PHILIPS ESSENTIAL TCBRLR46S/940 [16 u]; Marco empotrar 600x600mm [16 u]; Aro empotrable; Oficial electricista
- 36: 22822 - L 600 LED 19W 4000K [8 u]; Soporte superficie IP44 [8 u]; Silicona neutra; Oficial electricista
- 37: Regleta bornas 10mm2 [2 u]; Brida nylon negra [100 u]; Cinta senalizadora; Oficial electricista; Ayudante electricista
- 38: Programacion DALI, verificacion electrica, medicion fotometrica y periodo de prueba
- 39: Software DALI configurator; Tablet programacion [1 u]; Oficial electricista especialista DALI
- 40: Parametros Tabla 1 y Tabla 2 del proyecto; Escena guardia 100 lx; Escena produccion 1000 lx; Oficial electricista
- 41: Luxometro Testo 540; Ajuste umbral 300 lx; Test zona almacen; Oficial electricista
- 42: Multimetro Fluke 117; Medidor aislamiento Megger MIT430; Protocolo LOTO; Oficial electricista; Ingeniero supervisor
- 43: Luxometro calibrado Testo 540; Plano de puntos de medicion; Informe fotometrico final; Tecnico fotometria
- 44: Configuracion NVR 30 dias retencion; Cartel LOPD homologado [14 u]; Registro actividad tratamiento; Responsable proteccion datos
- 45: Test sistema completo 48h; Acta recepcion provisional; Documentacion as-built; Oficial electricista; Oficial instalador redes
- 46: Firma acta recepcion; Entrega documentacion tecnica; Inicio periodo garantia
